# USP Projekat 2018

Schedule from MS Project, 2018-07-02 to 2021-07-01, costs in €.
AGEDIS - Advanced Garbage Evidention and DIsposal System
Elektrotehnički fakultet u Beogradu
Projekat koji modernizuje sistem bacanja đubreta i evidencije plaćenih računa

## Calendars

- Standard: Mon-Fri 08:00-12:00, 13:00-17:00; Sat-Sun off. Exceptions (off unless hours are given): 2018-12-30 to 2019-12-30 (Nova Godina, recurring), 2019-01-08 to 2021-01-08 (Božić, recurring).

## Resources

| Resource | Group | Unit | Rate |
| --- | --- | --- | --- |
| BMU - Menadzer1 | BMU |  | 35 |
| BMU - Istraživač1 | BMU |  | 26.75 |
| BMU - Tehničar1 | BMU |  | 20.25 |
| BMU - Administrator1 | BMU |  | 16.38 |
| Vaisala - Menadžer1 | Vaisala |  | 35 |
| Vaisala - Istraživač1 | Vaisala |  | 26.75 |
| Vaisala - Tehničar1 | Vaisala |  | 20.25 |
| Vaisala - Administrator1 | Vaisala |  | 16.38 |
| SR - Menadžer1 | Swedish Recycling |  | 36.75 |
| SR - Istraživač1 | Swedish Recycling |  | 30.13 |
| SR - Tehničar1 | Swedish Recycling |  | 23.75 |
| SR - Administrator1 | Swedish Recycling |  | 19.63 |
| Xebia - Menadžer1 | Xebia |  | 36.75 |
| Xebia - Istraživač1 | Xebia |  | 30.13 |
| Xebia - Tehničar1 | Xebia |  | 23.75 |
| Xebia - Administrator1 | Xebia |  | 19.63 |
| ETF - Menadžer1 | Elektortehnički fakultet |  | 13.5 |
| ETF - Istraživač1 | Elektortehnički fakultet |  | 10 |
| ETF - Tehničar1 | Elektortehnički fakultet |  | 7.13 |
| ETF - Administrator1 | Elektortehnički fakultet |  | 5.63 |
| Licenca za softver za generisanje statistike | Licenca | licenca | 1666.67 |
| Licenca za softver za modelovanje aplikacije | Licenca | licenca | 1666.67 |
| Licenca za softver za testiranje | Licenca | licenca | 833.33 |
| Server sale | Prostor |  | 50000 |
| Modemi za pametne kante | Hardver |  | 30 |
| Senzori za pametne kante | Hardver |  | 20 |
| Reklamni materijal | Promo materijal |  | 16666.7 |
| Ulaznice za konferencije | Promo materijal |  | 833.33 |
| Materijali za podršku klijenata | Promo materijal |  | 333.33 |
| Eksterna verifikacija modela sistema | Outsourcing |  | 5333.33 |
| Licenca za Microsoft Project | Licenca | licenca | 1800 |
| Proizvodnja pametnih kanti | Outsourcing |  | 80000 |
| Reklamni video materijali |  |  | 13666.7 |
| BMU - Menadzer3 | BMU |  | 35 |
| BMU - Menadzer2 | BMU |  | 35 |
| BMU - Istraživač3 | BMU |  | 26.75 |
| BMU - Istraživač2 | BMU |  | 26.75 |
| BMU - Tehničar3 | BMU |  | 20.25 |
| BMU - Tehničar2 | BMU |  | 20.25 |
| BMU - Administrator3 | BMU |  | 16.38 |
| BMU - Administrator2 | BMU |  | 16.38 |
| Vaisala - Menadžer3 | Vaisala |  | 35 |
| Vaisala - Menadžer2 | Vaisala |  | 35 |
| Vaisala - Istraživač3 | Vaisala |  | 26.75 |
| Vaisala - Istraživač2 | Vaisala |  | 26.75 |
| Vaisala - Tehničar3 | Vaisala |  | 20.25 |
| Vaisala - Tehničar2 | Vaisala |  | 20.25 |
| Vaisala - Administrator3 | Vaisala |  | 16.38 |
| Vaisala - Administrator2 | Vaisala |  | 16.38 |
| SR - Menadžer3 | Swedish Recycling |  | 36.75 |
| SR - Menadžer2 | Swedish Recycling |  | 36.75 |
| SR - Istraživač3 | Swedish Recycling |  | 30.13 |
| SR - Istraživač2 | Swedish Recycling |  | 30.13 |
| SR - Tehničar3 | Swedish Recycling |  | 23.75 |
| SR - Tehničar2 | Swedish Recycling |  | 23.75 |
| SR - Administrator3 | Swedish Recycling |  | 19.63 |
| SR - Administrator2 | Swedish Recycling |  | 19.63 |
| Xebia - Menadžer3 | Xebia |  | 36.75 |
| Xebia - Menadžer2 | Xebia |  | 36.75 |
| Xebia - Istraživač3 | Xebia |  | 30.13 |
| Xebia - Istraživač2 | Xebia |  | 30.13 |
| Xebia - Tehničar3 | Xebia |  | 23.75 |
| Xebia - Tehničar2 | Xebia |  | 23.75 |
| Xebia - Administrator3 | Xebia |  | 19.63 |
| Xebia - Administrator2 | Xebia |  | 19.63 |
| ETF - Menadžer3 | Elektortehnički fakultet |  | 13.5 |
| ETF - Menadžer2 | Elektortehnički fakultet |  | 13.5 |
| ETF - Istraživač3 | Elektortehnički fakultet |  | 10 |
| ETF - Istraživač2 | Elektortehnički fakultet |  | 10 |
| ETF - Tehničar3 | Elektortehnički fakultet |  | 7.13 |
| ETF - Tehničar2 | Elektortehnički fakultet |  | 7.13 |
| ETF - Administrator3 | Elektortehnički fakultet |  | 5.63 |
| ETF - Administrator2 | Elektortehnički fakultet |  | 5.63 |
| Serveri |  |  |  |
| Mrežna oprema |  |  |  |
| Čipovi za pametne kante |  |  |  |
| Matične ploče za pametne kante |  |  |  |
| LCD displejevi za pametne kante |  |  |  |

## Schedule

| ID | WBS | Task | Duration | Start | Finish | Predecessors | Total slack | Free slack | Resources | Work | Cost | book1 |
| --- | --- | --- | --- | --- | --- | --- | --- | --- | --- | --- | --- | --- |
| 1 | 1 | **WP1 - Analiza tržišta i korisničkih zahteva** | 88d | 2018-07-02 | 2018-10-31 |  |  |  |  | 1600h | 31,937.92 |  |
| 2 | 1.1 | **Analiza tržišta** | 40d | 2018-07-02 | 2018-08-24 |  | 0d |  |  | 480h | 10,466 | 146/31% |
| 3 | 1.1.1 | **Iniciranje analize tržišta** | 3d | 2018-07-02 | 2018-07-04 |  | 9d | 0d |  | 24h | 774 |  |
| 4 | 1.1.1.1 | Selekcija ljudi | 1d | 2018-07-02 | 2018-07-02 |  | 9d | 0d | BMU - Menadzer3 | 8h | 280 |  |
| 5 | 1.1.1.2 | Formiranje timova | 1d | 2018-07-03 | 2018-07-03 | 4 | 9d | 0d | BMU - Menadzer3 | 8h | 280 |  |
| 6 | 1.1.1.3 | Dobijanje odobrenja o validnosti timova | 1d | 2018-07-04 | 2018-07-04 | 5 | 9d |  | BMU - Istraživač1 | 8h | 214 |  |
| 7 | 1.1.2 | **Planiranje analize tržišta** | 5d | 2018-07-05 | 2018-07-11 | 3 | 9d | 0d |  | 56h | 1,744.08 | 17 |
| 8 | 1.1.2.1 | Definisanje svih potrebnih aktivnosti faze | 1d | 2018-07-05 | 2018-07-05 |  | 9d | 0d | SR - Istraživač1 | 8h | 241.04 |  |
| 9 | 1.1.2.2 | Dodeljivanje aktivnosti timovima | 1d | 2018-07-06 | 2018-07-06 | 8 | 9d | 0d | SR - Istraživač1 | 8h | 241.04 |  |
| 10 | 1.1.2.3 | Iniciranje kontakta sa komunalnim službama | 2d | 2018-07-05 | 2018-07-06 |  | 9d | 0d | SR - Menadžer2 | 16h | 588 |  |
| 11 | 1.1.2.4 | Dodeljivanje lokacija timovima | 1d | 2018-07-09 | 2018-07-09 | 10, 9 | 9d | 0d | SR - Menadžer2 | 8h | 294 |  |
| 12 | 1.1.2.5 | Pisanje izveštaja o planu | 1d | 2018-07-10 | 2018-07-10 | 11 | 9d | 0d | SR - Tehničar1 | 8h | 190 |  |
| 13 | 1.1.2.6 | Dobijanje dozvole od višeg menadžmenta | 1d | 2018-07-11 | 2018-07-11 | 12 | 9d |  | SR - Tehničar1 | 8h | 190 |  |
| 14 | 1.1.3 | **Izvršavanje analize tržišta** | 18d | 2018-07-12 | 2018-08-06 | 7 | 9d |  |  | 112h | 1,571.28 | 24 |
| 15 | 1.1.3.1 | Prepoznavanje trenutnog stanja | 1d | 2018-07-12 | 2018-07-12 |  | 110d | 8d | SR - Tehničar2 | 8h | 190 |  |
| 16 | 1.1.3.2 | **Rad na terenu** | 8d | 2018-07-25 | 2018-08-03 | 15 |  |  |  | 96h | 1,140.24 |  |
| 17 | 1.1.3.2.1 | **Rad na terenu 1** | 2d | 2018-07-25 | 2018-07-26 |  | 102d | 0d |  | 24h | 240 |  |
| 18 | 1.1.3.2.1.1 | Sastanak sa komunalnom službom | 1d | 2018-07-25 | 2018-07-25 |  | 102d | 0d | ETF - Istraživač2 | 8h | 80 |  |
| 19 | 1.1.3.2.1.2 | Analiziranje konkretnog stanja | 1d | 2018-07-25 | 2018-07-25 |  | 102d | 0d | ETF - Istraživač3 | 8h | 80 |  |
| 20 | 1.1.3.2.1.3 | Pisanje lokalnog izveštaja | 1d | 2018-07-26 | 2018-07-26 | 18, 19 | 102d |  | ETF - Istraživač3 | 8h | 80 |  |
| 21 | 1.1.3.2.2 | **Rad na terenu 2** | 2d | 2018-07-27 | 2018-07-30 | 17 | 102d | 0d |  | 24h | 171.12 |  |
| 22 | 1.1.3.2.2.1 | Sastanak sa komunalnom službom | 1d | 2018-07-27 | 2018-07-27 |  | 102d | 0d | ETF - Tehničar2 | 8h | 57.04 |  |
| 23 | 1.1.3.2.2.2 | Analiziranje konkretnog stanja | 1d | 2018-07-27 | 2018-07-27 |  | 102d | 0d | ETF - Tehničar3 | 8h | 57.04 |  |
| 24 | 1.1.3.2.2.3 | Pisanje lokalnog izveštaja | 1d | 2018-07-30 | 2018-07-30 | 23, 22 | 102d |  | ETF - Tehničar3 | 8h | 57.04 |  |

| ID | WBS | Task | Type | Duration | Start | Finish | Predecessors | Total slack | Free slack | Constraint | Resources | Work | Cost | book1 |
| --- | --- | --- | --- | --- | --- | --- | --- | --- | --- | --- | --- | --- | --- | --- |
| 25 | 1.1.3.2.3 | **Rad na terenu 3** |  | 2d | 2018-07-31 | 2018-08-01 | 21 | 102d | 0d |  |  | 24h | 159.12 |  |
| 26 | 1.1.3.2.3.1 | Sastanak sa komunalnom službom |  | 1d | 2018-07-31 | 2018-07-31 |  | 102d | 0d |  | ETF - Tehničar2 | 8h | 57.04 |  |
| 27 | 1.1.3.2.3.2 | Analiziranje konkretnog stanja |  | 1d | 2018-07-31 | 2018-07-31 |  | 102d | 0d |  | ETF - Administrator1 | 8h | 45.04 |  |
| 28 | 1.1.3.2.3.3 | Pisanje lokalnog izveštaja |  | 1d | 2018-08-01 | 2018-08-01 | 27, 26 | 102d |  |  | ETF - Tehničar3 | 8h | 57.04 |  |
| 29 | 1.1.3.2.4 | **Rad na terenu 4** |  | 2d | 2018-08-02 | 2018-08-03 | 25 | 102d |  |  |  | 24h | 570 |  |
| 30 | 1.1.3.2.4.1 | Sastanak sa komunalnom službom |  | 1d | 2018-08-02 | 2018-08-02 |  | 102d | 0d |  | SR - Tehničar1 | 8h | 190 |  |
| 31 | 1.1.3.2.4.2 | Analiziranje konkretnog stanja |  | 1d | 2018-08-02 | 2018-08-02 |  | 102d | 0d |  | SR - Tehničar2 | 8h | 190 |  |
| 32 | 1.1.3.2.4.3 | Pisanje lokalnog izveštaja |  | 1d | 2018-08-03 | 2018-08-03 | 31, 30 | 102d |  |  | SR - Tehničar1 | 8h | 190 |  |
| 33 | 1.1.3.3 | Sumiranje rezultata |  | 1d | 2018-08-06 | 2018-08-06 | 16 | 102d |  |  | SR - Istraživač2 | 8h | 241.04 |  |
| 34 | 1.1.4 | **Monitoring I kontrola analize tržišta** |  | 40d | 2018-07-02 | 2018-08-24 |  |  |  |  |  | 248h | 6,092.48 | 95 |
| 35 | 1.1.4.1 | Uspostavljenje sistema za praćenje napretka |  | 5d | 2018-07-02 | 2018-07-06 |  | 111d | 0d |  | ETF - Menadžer1 | 40h | 540 |  |
| 36 | 1.1.4.2 | Praćenje napretka |  | 12d | 2018-07-09 | 2018-07-24 | 35 | 111d |  |  | SR - Istraživač1 | 96h | 2,892.48 |  |
| 37 | 1.1.4.3 | Otkrivanje I rešavanje problema |  | 14d | 2018-07-02 | 2018-07-19 |  | 114d |  |  | SR - Tehničar3 | 112h | 2,660 |  |
| 38 | 1.1.4.4 | **Izveštavanje o statusu analize** |  | 30.75d | 2018-07-06 | 2018-08-17 |  | 0d |  |  |  |  |  |  |
| 39 | 1.1.4.4.1 | Izveštavanje o statusu analize 1 | manual | 1d | 2018-07-06 | 2018-07-06 |  |  |  | start no earlier than 2018-07-06 |  |  |  |  |
| 40 | 1.1.4.4.2 | Izveštavanje o statusu analize 2 | manual | 1d | 2018-07-13 | 2018-07-13 |  |  |  | start no earlier than 2018-07-13 |  |  |  |  |
| 41 | 1.1.4.4.3 | Izveštavanje o statusu analize 3 | manual | 1d | 2018-07-20 | 2018-07-20 |  |  |  | start no earlier than 2018-07-20 |  |  |  |  |
| 42 | 1.1.4.4.4 | Izveštavanje o statusu analize 4 | manual | 1d | 2018-07-27 | 2018-07-27 |  |  |  | start no earlier than 2018-07-27 |  |  |  |  |
| 43 | 1.1.4.4.5 | Izveštavanje o statusu analize 5 | manual | 1d | 2018-08-03 | 2018-08-03 |  |  |  | start no earlier than 2018-08-03 |  |  |  |  |
| 44 | 1.1.4.4.6 | Izveštavanje o statusu analize 6 | manual | 1d | 2018-08-10 | 2018-08-10 |  |  |  | start no earlier than 2018-08-10 |  |  |  |  |
| 45 | 1.1.4.4.7 | Izveštavanje o statusu analize 7 | manual | 1d | 2018-08-17 | 2018-08-17 |  |  |  | start no earlier than 2018-08-17 |  |  |  |  |
| 46 | 1.1.5 | **Zatvaranje analize tržišta** |  | 5d | 2018-07-02 | 2018-07-06 |  | 123d |  |  |  | 40h | 284.16 |  |
| 47 | 1.1.5.1 | Pisanje završnog izveštaja |  | 2d | 2018-07-02 | 2018-07-03 |  | 123d | 0d |  | ETF - Administrator1 | 16h | 90.08 |  |
| 48 | 1.1.5.2 | Izvršavanje revizije kompletne analize |  | 1d | 2018-07-04 | 2018-07-04 | 47 | 123d | 0d |  | ETF - Istraživač2 | 8h | 80 |  |
| 49 | 1.1.5.3 | Dobijanje odobrenja od menadžera |  | 2d | 2018-07-05 | 2018-07-06 | 48 | 123d |  |  | ETF - Tehničar1 | 16h | 114.08 |  |

| ID | WBS | Task | Duration | Start | Finish | Predecessors | Total slack | Free slack | Resources | Work | Cost | book1 |
| --- | --- | --- | --- | --- | --- | --- | --- | --- | --- | --- | --- | --- |
| 50 | 1.2 | **Analiza korisničkih zahteva** | 88d | 2018-07-02 | 2018-10-31 |  | 4d |  |  | 1120h | 21,471.92 | 326/69% |
| 51 | 1.2.1 | **Iniciranje analize korisničkih zahteva** | 4d | 2018-07-02 | 2018-07-05 |  | 124d |  |  | 32h | 935.04 | 10 |
| 52 | 1.2.1.1 | Napisati one-page opis posla | 1d | 2018-07-02 | 2018-07-02 |  | 124d | 0d | SR - Administrator2 | 8h | 157.04 |  |
| 53 | 1.2.1.2 | Selekcija ljudi | 1d | 2018-07-03 | 2018-07-03 | 52 | 124d | 0d | SR - Menadžer1 | 8h | 294 |  |
| 54 | 1.2.1.3 | Formiranje timova | 1d | 2018-07-04 | 2018-07-04 | 53 | 124d | 0d | SR - Menadžer1 | 8h | 294 |  |
| 55 | 1.2.1.4 | Dobijanje odobrenja o validnosti timova | 1d | 2018-07-05 | 2018-07-05 | 54 | 124d |  | SR - Tehničar2 | 8h | 190 |  |
| 56 | 1.2.2 | **Planiranje analize korisničkih zahteva** | 6d | 2018-07-02 | 2018-07-09 |  | 122d |  |  | 64h | 1,153.12 | 20 |
| 57 | 1.2.2.1 | Definisanje svih potrebnih aktivnosti faze | 1d | 2018-07-02 | 2018-07-02 |  | 122d | 0d | ETF - Administrator3 | 8h | 45.04 |  |
| 58 | 1.2.2.2 | Dodeljivanje aktivnosti timovima | 1d | 2018-07-03 | 2018-07-03 | 57 | 122d | 0d | SR - Tehničar2 | 8h | 190 |  |
| 59 | 1.2.2.3 | Priprema sistema za anketiranje | 2d | 2018-07-04 | 2018-07-05 | 58 | 122d | 0d | SR - Tehničar1 | 16h | 380 |  |
| 60 | 1.2.2.4 | Priprema baza podataka za skladištenje rezultata anketa | 2d | 2018-07-04 | 2018-07-05 | 58 | 122d | 0d | BMU - Tehničar3 | 16h | 324 |  |
| 61 | 1.2.2.5 | Pisanje izveštaja o planu | 1d | 2018-07-06 | 2018-07-06 | 59, 60 | 122d | 0d | ETF - Tehničar2 | 8h | 57.04 |  |
| 62 | 1.2.2.6 | Dobijanje dozvole od višeg menadžmenta | 1d | 2018-07-09 | 2018-07-09 | 61 | 122d |  | SR - Administrator2 | 8h | 157.04 |  |
| 63 | 1.2.3 | **Izvršavanje analize korisničkih zahteva** | 22d | 2018-07-02 | 2018-07-31 |  | 106d |  |  | 304h | 5,220.56 | 93 |
| 64 | 1.2.3.1 | **Izvršavanje anketa** | 8d | 2018-07-02 | 2018-07-11 |  | 106d | 0d |  | 64h | 944.24 | 20 |
| 65 | 1.2.3.1.1 | Pisanje korisničkih anketa | 1d | 2018-07-02 | 2018-07-02 |  | 106d | 0d | ETF - Tehničar2 | 8h | 57.04 |  |
| 66 | 1.2.3.1.2 | Izvršavanje anketa | 4d | 2018-07-03 | 2018-07-06 | 65 | 106d | 0d | ETF - Istraživač1 [50%]; SR - Istraživač2 [50%] | 32h | 642.08 |  |
| 67 | 1.2.3.1.3 | Analiziranje rezultata anketa | 2d | 2018-07-09 | 2018-07-10 | 66 | 106d | 0d | ETF - Tehničar2 | 16h | 114.08 |  |
| 68 | 1.2.3.1.4 | Dokumentovanje rezultata anketa | 1d | 2018-07-11 | 2018-07-11 | 67 | 106d |  | BMU - Administrator1 | 8h | 131.04 |  |
| 69 | 1.2.3.2 | Izvršavanje intervjua | 8d | 2018-07-02 | 2018-07-11 |  | 106d | 0d | ETF - Menadžer2 | 64h | 864 |  |
| 70 | 1.2.3.3 | Organizacija tribina | 8d | 2018-07-02 | 2018-07-11 |  | 106d | 0d | SR - Istraživač3 | 64h | 1,928.32 |  |
| 71 | 1.2.3.4 | Sumiranje rezultata | 1d | 2018-07-12 | 2018-07-12 | 64, 69, 70 | 106d | 0d | ETF - Istraživač1 | 8h | 80 |  |
| 72 | 1.2.3.5 | Pisanje slučajeva korišćenja | 7d | 2018-07-13 | 2018-07-23 | 71 | 106d | 0d | ETF - Menadžer3 [50%]; ETF - Menadžer2 [50%] | 56h | 756 |  |
| 73 | 1.2.3.6 | Kreiranje Requirements Breakdown Structure (RBS) dokumenta | 5d | 2018-07-24 | 2018-07-30 | 72 | 106d | 0d | ETF - Menadžer3 [50%]; ETF - Menadžer2 [50%] | 40h | 540 |  |
| 74 | 1.2.3.7 | Pisanje konačnog izveštaja | 1d | 2018-07-31 | 2018-07-31 | 73 | 106d |  | ETF - Menadžer3 | 8h | 108 |  |

| ID | WBS | Task | Type | Duration | Start | Finish | Predecessors | Total slack | Free slack | Constraint | Resources | Work | Cost | book1 |
| --- | --- | --- | --- | --- | --- | --- | --- | --- | --- | --- | --- | --- | --- | --- |
| 75 | 1.2.4 | **Monitoring i kontrola analize korisničkih zahteva** |  | 88d | 2018-07-02 | 2018-10-31 |  | 4d |  |  |  | 640h | 12,711.2 | 193 |
| 76 | 1.2.4.1 | Uspostavljenje sistema za praćenje napretka |  | 3d | 2018-07-02 | 2018-07-04 |  | 95d | 0d |  | SR - Menadžer3 | 24h | 882 |  |
| 77 | 1.2.4.2 | Praćenje napretka |  | 30d | 2018-07-05 | 2018-08-15 | 76 | 95d |  |  | ETF - Administrator3 [50%]; SR - Menadžer1 [50%] | 240h | 5,085.6 |  |
| 78 | 1.2.4.3 | Otkrivanje I rešavanje problema |  | 30d | 2018-07-02 | 2018-08-10 |  | 98d |  |  | ETF - Administrator2 [50%]; BMU - Tehničar1 [50%] | 240h | 3,105.6 |  |
| 79 | 1.2.4.4 | **Izveštavanje o statusu analize** |  | 84.25d | 2018-07-06 | 2018-10-31 |  |  |  |  |  | 136h | 3,638 |  |
| 80 | 1.2.4.4.1 | Izveštavanje o statusu analize 1 | manual | 1d | 2018-07-06 | 2018-07-06 |  |  |  | start no earlier than 2018-07-06 | BMU - Istraživač2 | 8h | 214 |  |
| 81 | 1.2.4.4.2 | Izveštavanje o statusu analize 2 | manual | 1d | 2018-07-13 | 2018-07-13 |  |  |  | start no earlier than 2018-07-13 | BMU - Istraživač2 | 8h | 214 |  |
| 82 | 1.2.4.4.3 | Izveštavanje o statusu analize 3 | manual | 1d | 2018-07-20 | 2018-07-20 |  |  |  | start no earlier than 2018-07-20 | BMU - Istraživač2 | 8h | 214 |  |
| 83 | 1.2.4.4.4 | Izveštavanje o statusu analize 4 | manual | 1d | 2018-07-27 | 2018-07-27 |  |  |  | start no earlier than 2018-07-27 | BMU - Istraživač2 | 8h | 214 |  |
| 84 | 1.2.4.4.5 | Izveštavanje o statusu analize 5 | manual | 1d | 2018-08-03 | 2018-08-03 |  |  |  | start no earlier than 2018-08-03 | BMU - Istraživač2 | 8h | 214 |  |
| 85 | 1.2.4.4.6 | Izveštavanje o statusu analize 6 | manual | 1d | 2018-08-10 | 2018-08-10 |  |  |  | start no earlier than 2018-08-10 | BMU - Istraživač2 | 8h | 214 |  |
| 86 | 1.2.4.4.7 | Izveštavanje o statusu analize 7 | manual | 1d | 2018-08-17 | 2018-08-17 |  |  |  | start no earlier than 2018-08-17 | BMU - Istraživač2 | 8h | 214 |  |
| 87 | 1.2.4.4.8 | Izveštavanje o statusu analize 8 | manual | 1d | 2018-08-24 | 2018-08-24 |  |  |  | start no earlier than 2018-08-24 | BMU - Istraživač2 | 8h | 214 |  |
| 88 | 1.2.4.4.9 | Izveštavanje o statusu analize 9 | manual | 1d | 2018-08-31 | 2018-08-31 |  |  |  | start no earlier than 2018-08-31 | BMU - Istraživač2 | 8h | 214 |  |
| 89 | 1.2.4.4.10 | Izveštavanje o statusu analize 10 | manual | 1d | 2018-09-07 | 2018-09-07 |  |  |  | start no earlier than 2018-09-07 | BMU - Istraživač2 | 8h | 214 |  |
| 90 | 1.2.4.4.11 | Izveštavanje o statusu analize 11 | manual | 1d | 2018-09-14 | 2018-09-14 |  |  |  | start no earlier than 2018-09-14 | BMU - Istraživač2 | 8h | 214 |  |
| 91 | 1.2.4.4.12 | Izveštavanje o statusu analize 12 | manual | 1d | 2018-09-21 | 2018-09-21 |  |  |  | start no earlier than 2018-09-21 | BMU - Istraživač2 | 8h | 214 |  |
| 92 | 1.2.4.4.13 | Izveštavanje o statusu analize 13 | manual | 1d | 2018-09-28 | 2018-09-28 |  |  |  | start no earlier than 2018-09-28 | BMU - Istraživač2 | 8h | 214 |  |
| 93 | 1.2.4.4.14 | Izveštavanje o statusu analize 14 | manual | 1d | 2018-10-05 | 2018-10-05 |  |  |  | start no earlier than 2018-10-05 | BMU - Istraživač2 | 8h | 214 |  |
| 94 | 1.2.4.4.15 | Izveštavanje o statusu analize 15 | manual | 1d | 2018-10-12 | 2018-10-12 |  |  |  | start no earlier than 2018-10-12 | BMU - Istraživač2 | 8h | 214 |  |
| 95 | 1.2.4.4.16 | Izveštavanje o statusu analize 16 | manual | 1d | 2018-10-19 | 2018-10-19 |  |  |  | start no earlier than 2018-10-19 | BMU - Istraživač2 | 8h | 214 |  |
| 96 | 1.2.4.4.17 | Izveštavanje o statusu analize 17 | manual | 1d | 2018-10-26 | 2018-10-26 |  |  |  | start no earlier than 2018-10-26 | BMU - Istraživač2 | 8h | 214 |  |
| 97 | 1.2.5 | **Zatvaranje analize korisničkih zahteva** |  | 10d | 2018-07-02 | 2018-07-13 |  | 118d |  |  |  | 80h | 1,452 | 10 |
| 98 | 1.2.5.1 | Pisanje završnog izveštaja |  | 4d | 2018-07-02 | 2018-07-05 |  | 118d | 0d |  | ETF - Menadžer3 | 32h | 432 |  |
| 99 | 1.2.5.2 | Izvršavanje revizije kompletne analize |  | 4d | 2018-07-06 | 2018-07-11 | 98 | 118d | 0d |  | ETF - Menadžer3 | 32h | 432 |  |
| 100 | 1.2.5.3 | Dobijanje odobrenja od menadžera |  | 2d | 2018-07-12 | 2018-07-13 | 99 | 118d |  |  | SR - Menadžer2 | 16h | 588 |  |
| 101 | 2 | Prekretnica - Završena analiza zahteva i tržišta | milestone, manual | 0d | 2018-11-01 | 2018-11-01 | 1 |  |  |  |  |  |  |  |

| ID | WBS | Task | Type | Duration | Start | Finish | Predecessors | Total slack | Free slack | Resources | Work | Cost | book1 |
| --- | --- | --- | --- | --- | --- | --- | --- | --- | --- | --- | --- | --- | --- |
| 102 | 3 | **WP2 - Planiranje projekta** |  | 65d | 2018-11-01 | 2019-01-31 | 1 |  |  |  | 1040h | 29,389.66 | 260 |
| 103 | 3.1 | Planiranje budžeta |  | 27d | 2018-11-01 | 2018-12-07 | 104FF, 105FF | 136d |  | Xebia - Menadžer1; Xebia - Menadžer2 | 432h | 15,876 |  |
| 104 | 3.2 | Planiranje resursa |  | 8d | 2018-11-01 | 2018-11-12 |  | 146d | 19d | SR - Tehničar2; SR - Tehničar3 | 128h | 3,040 |  |
| 105 | 3.3 | Planiranje rizika |  | 16d | 2018-11-01 | 2018-11-22 |  | 138d | 11d | ETF - Menadžer2 [50%]; BMU - Istraživač1 [50%] | 128h | 2,576 |  |
| 106 | 3.4 | Raspodela posla po participantima |  | 14d | 2018-11-01 | 2018-11-20 |  | 137d | 0d | Vaisala - Menadžer1 [50%]; Vaisala - Administrator3 [25%]; Vaisala - Tehničar2 [25%] | 112h | 2,985.64 |  |
| 107 | 3.5 | Određivanje aktivnosti unutar svih faza projekta |  | 12d | 2018-11-21 | 2018-12-06 | 106 | 137d |  | BMU - Tehničar1 [50%]; ETF - Menadžer2 [50%] | 96h | 1,620 |  |
| 108 | 3.6 | Određivanje mere kvaliteta i postupaka | manual | 9d | 2018-12-27 | 2019-01-09 | 104, 105 |  |  | Xebia - Administrator1 [50%]; Vaisala - Istraživač2 [50%] | 72h | 1,669.68 |  |
| 109 | 3.7 | Određivanje načina komunikacije | manual | 9d | 2018-12-27 | 2019-01-09 | 104, 105 |  |  | BMU - Administrator3 [25%]; BMU - Istraživač2 [50%]; BMU - Tehničar2 [25%] | 72h | 1,622.34 |  |
| 110 | 4 | Prekretnica - Završen plan projekta | milestone, manual | 0d | 2019-02-01 | 2019-02-01 | 102 |  |  |  |  |  |  |
| 111 | 5 | **WP3 - Modelovanje i dizajn** |  | 106d | 2019-02-01 | 2019-06-28 | 102 |  |  | Licenca za softver za modelovanje aplikacije [1 licenca] | 1624h | 40,421.51 |  |
| 112 | 5.1 | **Modelovanje i dizajn veb-portala** |  | 43d | 2019-02-01 | 2019-04-02 |  | 98d |  |  | 592h | 15,696.48 |  |
| 113 | 5.1.1 | Izrada dijagrama slučajeva korišćenja |  | 12d | 2019-02-01 | 2019-02-18 |  | 98d | 0d | Xebia - Istraživač2 [25%]; Xebia - Tehničar2 [25%]; Xebia - Administrator3 [25%]; Xebia - Tehničar1 [25%] | 96h | 2,334.24 |  |
| 114 | 5.1.2 | Izrada dijagrama klasa |  | 31d | 2019-02-19 | 2019-04-02 | 113 | 98d |  | Xebia - Istraživač1 [25%]; Xebia - Istraživač3 [25%]; Xebia - Tehničar3 [50%] | 248h | 6,681.12 |  |
| 115 | 5.1.3 | Izrada dijagrama sekvenci |  | 31d | 2019-02-19 | 2019-04-02 | 113 | 98d |  | Xebia - Istraživač2 [50%]; Xebia - Tehničar1 [25%]; Xebia - Tehničar2 [25%] | 248h | 6,681.12 |  |
| 116 | 5.2 | **Modelovanje i dizajn pametne kante** |  | 43d | 2019-02-01 | 2019-04-02 |  | 98d |  |  | 1032h | 23,058.36 |  |
| 117 | 5.2.1 | Dizajn spoljašnjosti kante |  | 43d | 2019-02-01 | 2019-04-02 |  | 98d |  | Vaisala - Administrator1 [50%]; Vaisala - Tehničar1 [50%]; Vaisala - Tehničar2 [50%]; Vaisala - Istraživač3 [50%] | 688h | 14,384.36 |  |
| 118 | 5.2.2 | Modelovanje arhitekture računara |  | 20d | 2019-02-01 | 2019-02-28 |  | 98d | 0d | Vaisala - Menadžer1 [25%]; Vaisala - Istraživač1 [25%]; Vaisala - Tehničar3 [25%]; Vaisala - Istraživač2 [25%] | 160h | 4,350 |  |
| 119 | 5.2.3 | Dizajn unutrašnjosti kante |  | 23d | 2019-03-01 | 2019-04-02 | 118 | 98d |  | Vaisala - Tehničar1 [50%]; Vaisala - Istraživač3 [50%] | 184h | 4,324 |  |
| 120 | 6 | Prekretnica - Završeno modelovanje sistema | milestone, manual | 0d | 2019-07-01 | 2019-07-01 | 111 |  |  |  |  |  |  |
| 121 | 7 | **WP4 - Izrada prototipa pametne kante** |  | 66d | 2019-07-01 | 2019-09-30 | 111 |  |  |  | 674h | 9,759.34 |  |
| 122 | 7.1 | Izrada prototipa pametne kante |  | 19d | 2019-07-01 | 2019-07-25 |  | 34d | 21d | Vaisala - Istraživač2 [50%]; Vaisala - Tehničar2 [25%]; Vaisala - Tehničar3 [25%] | 152h | 3,572 |  |
| 123 | 7.2 | Izrada interfejsa prema softverskoj komponenti |  | 19d | 2019-07-01 | 2019-07-25 |  | 34d | 21d | Vaisala - Administrator3 [50%]; Vaisala - Tehničar2 [50%] | 152h | 2,783.88 |  |
| 124 | 7.3 | Izrada grafičkog korisničkog interfejsa |  | 19d | 2019-07-01 | 2019-07-25 |  | 34d | 21d | ETF - Tehničar1 [50%]; ETF - Tehničar2 [50%]; ETF - Administrator1 [25%]; ETF - Istraživač2 [50%] | 266h | 2,057.7 |  |
| 125 | 7.4 | Integracija i validacija prototipa | manual | 13d | 2019-08-26 | 2019-09-11 | 122, 123, 124 |  |  | ETF - Administrator1 [50%]; Vaisala - Tehničar3 [50%] | 104h | 1,345.76 |  |

| ID | WBS | Task | Type | Duration | Start | Finish | Predecessors | Total slack | Free slack | Resources | Work | Cost |
| --- | --- | --- | --- | --- | --- | --- | --- | --- | --- | --- | --- | --- |
| 126 | 8 | **WP5 - Izrada prototipa veb-portala** |  | 45d | 2019-07-01 | 2019-08-30 | 111 |  |  |  | 724h | 17,908.6 |
| 127 | 8.1 | Izrada glavnih stranica |  | 26d | 2019-07-01 | 2019-08-05 |  | 9d |  | Xebia - Tehničar1 [50%]; Xebia - Istraživač1 [25%]; Xebia - Istraživač2 [25%] | 208h | 5,603.52 |
| 128 | 8.2 | Izrada stranica za korisnike |  | 26d | 2019-07-01 | 2019-08-05 |  | 9d |  | Xebia - Menadžer2 [50%]; Vaisala - Tehničar3 [25%]; ETF - Tehničar2 [25%] | 208h | 5,245.76 |
| 129 | 8.3 | Izrada stranica za administratore |  | 26d | 2019-07-01 | 2019-08-05 |  | 9d |  | Xebia - Tehničar1 [50%]; Xebia - Administrator1 [25%]; Xebia - Administrator2 [25%] | 208h | 4,511.52 |
| 130 | 8.4 | Validacija i integracija prototipa | manual | 10d | 2019-08-19 | 2019-08-30 | 127, 128, 129 |  |  | SR - Istraživač1 [50%]; SR - Tehničar2 [25%]; SR - Tehničar3 [25%]; SR - Administrator3 [25%] | 100h | 2,547.8 |
| 131 | 9 | Prekretnica - Izrađeni prototipi | milestone, manual | 0d | 2019-10-01 | 2019-10-01 | 121, 126 |  |  |  |  |  |
| 132 | 10 | **WP6 - Implementacija pametne kante** |  | 172d | 2019-10-01 | 2020-05-29 | 121 |  |  |  | 1392h | 24,538.8 |
| 133 | 10.1 | Kreiranje hardverske komponente |  | 42d | 2019-10-01 | 2019-11-27 |  | 89d | 0d | Vaisala - Administrator1 [50%]; Vaisala - Tehničar1 [50%]; Vaisala - Tehničar2 [50%]; Vaisala - Istraživač3 [50%] | 672h | 14,049.84 |
| 134 | 10.2 | Izrada grafičkog korisničkog interfejsa |  | 28d | 2019-10-01 | 2019-11-07 |  | 144d |  | ETF - Tehničar1 [50%]; ETF - Tehničar2 [50%]; ETF - Administrator1 [25%]; ETF - Istraživač2 [50%] | 392h | 3,032.4 |
| 135 | 10.3 | **Konfiguracija hardverske komponente** |  | 41d | 2019-11-28 | 2020-01-27 | 133 | 97d |  |  | 328h | 7,456.56 |
| 136 | 10.3.1 | Dodavanje matične ploče |  | 14d | 2019-11-28 | 2019-12-17 |  | 97d | 0d | Vaisala - Tehničar1 [50%]; Vaisala - Istraživač1 [50%]; Matične ploče za pametne kante [0.1%] | 112h | 2,632 |
| 137 | 10.3.2 | Dodavanje čipova |  | 8d | 2019-12-18 | 2019-12-27 | 136 | 97d | 0d | Vaisala - Tehničar2 [50%]; Vaisala - Istraživač2 [50%]; Čipovi za pametne kante [0.1%] | 64h | 1,504 |
| 138 | 10.3.3 | Dodavanje LCD displeja |  | 8d | 2019-12-31 | 2020-01-10 | 137 | 97d | 0d | Vaisala - Tehničar2 [50%]; Vaisala - Tehničar3 [50%]; LCD displejevi za pametne kante [0.1%] | 64h | 1,296 |
| 139 | 10.3.4 | Dodavanje senzora |  | 8d | 2020-01-13 | 2020-01-22 | 138 | 97d | 0d | Vaisala - Tehničar1 [50%]; Vaisala - Tehničar2 [50%]; Senzori za pametne kante [500%] | 64h | 1,396 |
| 140 | 10.3.5 | Dodavanje mini modema |  | 3d | 2020-01-23 | 2020-01-27 | 139 | 97d |  | Vaisala - Administrator2 [50%]; Vaisala - Istraživač3 [25%]; Vaisala - Tehničar1 [25%]; Modemi za pametne kante [500%] | 24h | 628.56 |
| 141 | 11 | **WP7 - Implementacija veb-portala** |  | 193d | 2019-09-02 | 2020-05-29 | 126 |  |  |  | 1240h | 30,895 |
| 142 | 11.1 | **Frontend implementacija** |  | 48d | 2019-09-02 | 2019-11-06 |  | 158d | 4d |  | 384h | 10,080.64 |
| 143 | 11.1.1 | Izrada glavnih stranica |  | 16d | 2019-09-02 | 2019-09-23 |  | 130d | 0d | Xebia - Tehničar1 [50%]; Xebia - Istraživač1 [25%]; Xebia - Istraživač2 [25%] | 128h | 3,448.32 |
| 144 | 11.1.2 | Izrada stranica za korisnike |  | 16d | 2019-09-24 | 2019-10-15 | 143 | 130d | 0d | Xebia - Menadžer2 [50%]; Vaisala - Tehničar3 [25%]; BMU - Istraživač3 [25%] | 128h | 3,856 |
| 145 | 11.1.3 | Izrada stranica za administratore |  | 16d | 2019-10-16 | 2019-11-06 | 144 | 130d |  | Xebia - Tehničar1 [50%]; Xebia - Administrator1 [25%]; Xebia - Administrator2 [25%] | 128h | 2,776.32 |
| 146 | 11.2 | **Backend implementacija** |  | 52d | 2019-09-02 | 2019-11-12 |  | 154d | 0d |  | 736h | 17,802.96 |
| 147 | 11.2.1 | Izrada kontrolera |  | 40d | 2019-09-02 | 2019-10-25 |  | 128d | 2d | Xebia - Administrator1 [25%]; Vaisala - Istraživač1 [25%]; Xebia - Tehničar1 [25%]; Xebia - Tehničar2 [25%] | 320h | 7,510.4 |
| 148 | 11.2.2 | Omogućavanje komunikacije sa bazom |  | 7d | 2019-09-02 | 2019-09-10 |  | 126d | 0d | Xebia - Tehničar3 [50%]; Xebia - Administrator3 [50%] | 56h | 1,214.64 |
| 149 | 11.2.3 | Implementacija biznis logike |  | 20d | 2019-09-11 | 2019-10-08 | 148 | 126d | 0d | Xebia - Istraživač2 [20%]; Xebia - Istraživač1 [20%]; Xebia - Tehničar2 [20%]; BMU - Istraživač2 [20%]; BMU - Tehničar3 [20%] | 160h | 4,192.32 |
| 150 | 11.2.4 | Izrada modela |  | 15d | 2019-10-09 | 2019-10-29 | 149 | 126d | 0d | Xebia - Administrator1 [50%]; Xebia - Tehničar2 [50%] | 120h | 2,602.8 |
| 151 | 11.2.5 | Povezivanje sa sistemom za naplatu |  | 10d | 2019-10-30 | 2019-11-12 | 147, 150 | 126d |  | Xebia - Istraživač3 [50%]; Xebia - Istraživač2 [25%]; Xebia - Tehničar3 [25%] | 80h | 2,282.8 |
| 152 | 11.3 | Integracija frontend i backend dela |  | 15d | 2019-11-13 | 2019-12-03 | 142, 146 | 126d |  | Xebia - Menadžer2 [25%]; Xebia - Administrator1 [25%]; BMU - Tehničar2 [25%]; Xebia - Tehničar2 [25%] | 120h | 3,011.4 |
| 153 | 12 | Prekretnica - Završena implementacija | milestone, manual | 0d | 2020-06-01 | 2020-06-01 | 132, 141 |  |  |  |  |  |

| ID | WBS | Task | Type | Duration | Start | Finish | Predecessors | Total slack | Constraint | Resources | Work | Cost |
| --- | --- | --- | --- | --- | --- | --- | --- | --- | --- | --- | --- | --- |
| 154 | 13 | **WP8 - Testiranje pametne kante** |  | 88d | 2020-06-01 | 2020-09-30 | 132 |  |  | Licenca za softver za testiranje [1 licenca] | 960h | 13,654.13 |
| 155 | 13.1 | Izrada testova |  | 40d | 2020-06-01 | 2020-07-24 |  | 48d |  | SR - Istraživač1 [50%]; ETF - Istraživač1 [50%] | 320h | 6,420.8 |
| 156 | 13.2 | Pokretanje testova | manual | 80d | 2020-06-11 | 2020-09-30 |  |  | finish no earlier than 2020-09-30 | ETF - Istraživač2 | 640h | 6,400 |
| 157 | 14 | **WP9 - Testiranje veb-portala** |  | 88d | 2020-06-01 | 2020-09-30 | 141 |  |  | Licenca za softver za testiranje [1 licenca] | 840h | 25,047.41 |
| 158 | 14.1 | Izrada testova |  | 45d | 2020-06-01 | 2020-07-31 |  | 43d |  | BMU - Istraživač1 [50%]; Xebia - Istraživač1 [50%] | 360h | 10,238.4 |
| 159 | 14.2 | Pokretanje testova | manual | 60d | 2020-07-09 | 2020-09-30 |  |  | finish no earlier than 2020-09-30 | BMU - Istraživač2 [30%]; Xebia - Istraživač2 [70%] | 480h | 13,975.68 |
| 160 | 15 | Prekretnica - Završeno testiranje | milestone, manual | 0d | 2020-10-01 | 2020-10-01 | 154, 157 |  |  |  |  |  |
| 161 | 16 | **WP10 - Integracija hardvera i softvera** |  | 43d | 2020-10-01 | 2020-11-30 | 154, 157 |  |  |  | 728h | 19,744.96 |
| 162 | 16.1 | Koordinisanje postupka integracije |  | 43d | 2020-10-01 | 2020-11-30 |  | 0d |  | Vaisala - Menadžer1 | 344h | 12,040 |
| 163 | 16.2 | Omogućavanje integracije hardvera |  | 10d | 2020-10-01 | 2020-10-14 |  | 0d |  | ETF - Istraživač3 [50%]; Xebia - Istraživač1 [50%] | 80h | 1,605.2 |
| 164 | 16.3 | Omogućavanje integracije softvera |  | 5d | 2020-10-01 | 2020-10-07 |  | 5d |  | ETF - Istraživač3 [50%]; Xebia - Istraživač1 [50%] | 40h | 802.6 |
| 165 | 16.4 | Integracija |  | 33d | 2020-10-15 | 2020-11-30 | 163, 164 | 0d |  | ETF - Istraživač3 [50%]; Xebia - Istraživač1 [50%] | 264h | 5,297.16 |
| 166 | 17 | **WP11 - Integraciono testiranje** |  | 108d | 2020-12-01 | 2021-04-30 | 161 |  |  | Licenca za softver za testiranje [1 licenca]; Eksterna verifikacija modela sistema | 864h | 19,042.18 |
| 167 | 17.1 | Izrada testova |  | 40d | 2020-12-01 | 2021-01-26 |  | 0d |  | ETF - Tehničar1 [50%]; ETF - Istraživač3 [50%] | 320h | 2,740.8 |
| 168 | 17.2 | Pokretanje testova |  | 58d | 2021-01-27 | 2021-04-16 | 167 | 0d |  | ETF - Tehničar1 [50%]; SR - Istraživač1 [50%] | 464h | 8,644.32 |
| 169 | 17.3 | Popravljanje problema |  | 10d | 2021-04-19 | 2021-04-30 | 168 | 0d |  | ETF - Tehničar1 [50%]; SR - Istraživač1 [50%] | 80h | 1,490.4 |
| 170 | 18 | Prekretnica - Integrisana hardverska i softverska komponenta | milestone, manual | 0d | 2021-05-03 | 2021-05-03 | 161, 166 |  |  |  |  |  |
| 171 | 19 | **WP12 - Puštanje sistema u rad** |  | 43d | 2021-05-03 | 2021-06-30 | 166 |  |  |  | 1400h | 287,457.33 |
| 172 | 19.1 | Proizvodnja pametnih kanti |  | 43d | 2021-05-03 | 2021-06-30 |  | 0d |  | Proizvodnja pametnih kanti; Čipovi za pametne kante [0.1%]; LCD displejevi za pametne kante [0.1%]; Matične ploče za pametne kante [0.1%]; Modemi za pametne kante [249500%]; Senzori za pametne kante [249500%] |  | 204,750 |
| 173 | 19.2 | Postavljanje kanti |  | 43d | 2021-05-03 | 2021-06-30 |  | 0d |  | SR - Tehničar3 [50%]; Vaisala - Tehničar2 [50%] | 344h | 7,568 |
| 174 | 19.3 | Instalacija softvera |  | 43d | 2021-05-03 | 2021-06-30 |  | 0d |  | SR - Tehničar2 [50%]; Vaisala - Tehničar3 [50%]; Mrežna oprema [0.1%]; Server sale; Serveri [0.1%] | 344h | 57,568 |
| 175 | 19.4 | Postavljanje veb-portala na Internet |  | 16d | 2021-05-03 | 2021-05-24 |  | 27d |  | Vaisala - Tehničar1 | 128h | 2,592 |
| 176 | 19.5 | Administracija postupka puštanja sistema u rad |  | 43d | 2021-05-03 | 2021-06-30 |  | 0d |  | BMU - Menadzer3 | 344h | 12,040 |
| 177 | 19.6 | Obuka osoblja i korisnika |  | 20d | 2021-05-03 | 2021-05-28 |  | 23d |  | ETF - Tehničar1 [50%]; ETF - Tehničar2 [50%] | 160h | 1,140.8 |
| 178 | 19.7 | Obezbeđivanje mehanizma za podršku |  | 10d | 2021-05-03 | 2021-05-14 |  | 33d |  | Materijali za podršku klijenata; BMU - Administrator1 [50%]; BMU - Tehničar3 [50%] | 80h | 1,798.53 |
| 179 | 20 | Prekretnica - Pušten sistem u rad | milestone, manual | 0d | 2021-07-01 | 2021-07-01 | 171 |  |  |  |  |  |

| ID | WBS | Task | Type | Duration | Start | Finish | Predecessors | Total slack | Free slack | Constraint | Resources | Work | Cost |
| --- | --- | --- | --- | --- | --- | --- | --- | --- | --- | --- | --- | --- | --- |
| 180 | 21 | **WP13 - Evaluacija i disiminacija** |  | 194d | 2020-10-01 | 2021-06-30 | 154, 157 |  |  |  | Licenca za softver za generisanje statistike [1 licenca] | 3296h | 115,773.35 |
| 181 | 21.1 | Prikupljanje utisaka |  | 97d | 2020-10-01 | 2021-02-15 |  | 0d |  |  | SR - Tehničar1 [50%]; SR - Tehničar2 [50%] | 776h | 18,430 |
| 182 | 21.2 | Promovisanje proizvoda |  | 97d | 2021-02-16 | 2021-06-30 | 181 | 0d |  |  | SR - Tehničar3 [4%]; BMU - Administrator1 [15%]; SR - Administrator1 [15%]; BMU - Tehničar2 [66%]; Reklamni video materijali | 776h | 28,966.67 |
| 183 | 21.3 | Organizovanje marketinških kampanja |  | 100d | 2020-10-01 | 2021-02-18 |  | 0d |  |  | BMU - Menadzer1 [9%]; BMU - Menadzer2 [9%]; SR - Menadžer1 [36%]; BMU - Istraživač1 [46%] | 800h | 25,468 |
| 184 | 21.4 | Obezbeđivanje reklamnog materijala |  | 24d | 2020-10-01 | 2020-11-03 |  | 170d |  |  | BMU - Tehničar1; Reklamni materijal | 192h | 20,554.67 |
| 185 | 21.5 | Učestvovanje na sajmovima i konferencijama |  | 94d | 2021-02-19 | 2021-06-30 | 183 | 0d |  |  | BMU - Istraživač1 [8%]; SR - Istraživač1 [27%]; SR - Istraživač2 [30%]; BMU - Tehničar1 [35%]; Ulaznice za konferencije | 752h | 20,687.33 |
| 186 | 22 | Prekretnica - Završena evaluacija i disiminacija | milestone, manual | 0d | 2021-07-01 | 2021-07-01 | 180 |  |  |  |  |  |  |
| 187 | 23 | **WP14 - Upravljanje projektom** |  | 779d | 2018-07-02 | 2021-06-30 |  |  |  |  | Licenca za softver za generisanje statistike [1 licenca]; Licenca za Microsoft Project [1 licenca] | 2712h | 79,982.19 |
| 188 | 23.1 | **Rukovođenje projektom** |  | 757.75d | 2018-07-03 | 2021-06-02 |  | 0d |  |  |  | 536h | 18,760 |
| 189 | 23.1.1 | Rukovođenje projektom 1 | manual | 1d | 2018-07-03 | 2018-07-03 |  |  |  | start no earlier than 2018-07-03 | BMU - Menadzer1; BMU - Menadzer2 | 16h | 560 |
| 190 | 23.1.2 | Rukovođenje projektom 2 | manual | 1d | 2018-08-02 | 2018-08-02 |  |  |  | start no earlier than 2018-08-02 | BMU - Menadzer1; BMU - Menadzer2 | 16h | 560 |
| 191 | 23.1.3 | Rukovođenje projektom 3 | manual | 1d | 2018-09-04 | 2018-09-04 |  |  |  | start no earlier than 2018-09-04 | BMU - Menadzer1; BMU - Menadzer2 | 16h | 560 |
| 192 | 23.1.4 | Rukovođenje projektom 4 | manual | 1d | 2018-10-02 | 2018-10-02 |  |  |  | start no earlier than 2018-10-02 | BMU - Menadzer1; BMU - Menadzer2 | 16h | 560 |
| 193 | 23.1.5 | Rukovođenje projektom 5 | manual | 1d | 2018-11-02 | 2018-11-02 |  |  |  | start no earlier than 2018-11-02 | BMU - Menadzer1; BMU - Menadzer2 | 16h | 560 |
| 194 | 23.1.6 | Rukovođenje projektom 6 | manual | 1d | 2018-12-04 | 2018-12-04 |  |  |  | start no earlier than 2018-12-04 | BMU - Menadzer1; BMU - Menadzer2 | 16h | 560 |
| 195 | 23.1.7 | Rukovođenje projektom 7 | manual | 1d | 2019-01-02 | 2019-01-02 |  |  |  | start no earlier than 2019-01-02 | BMU - Menadzer1; BMU - Menadzer2 | 16h | 560 |
| 196 | 23.1.8 | Rukovođenje projektom 8 | manual | 1d | 2019-02-05 | 2019-02-05 |  |  |  | start no earlier than 2019-02-05 | BMU - Menadzer1; BMU - Menadzer2 | 16h | 560 |
| 197 | 23.1.9 | Rukovođenje projektom 9 | manual | 1d | 2019-03-05 | 2019-03-05 |  |  |  | start no earlier than 2019-03-05 | BMU - Menadzer1; BMU - Menadzer2 | 16h | 560 |
| 198 | 23.1.10 | Rukovođenje projektom 10 | manual | 1d | 2019-04-02 | 2019-04-02 |  |  |  | start no earlier than 2019-04-02 | BMU - Menadzer1; BMU - Menadzer2 | 16h | 560 |
| 199 | 23.1.11 | Rukovođenje projektom 11 | manual | 1d | 2019-05-02 | 2019-05-02 |  |  |  | start no earlier than 2019-05-02 | BMU - Menadzer1; BMU - Menadzer2 | 16h | 560 |
| 200 | 23.1.12 | Rukovođenje projektom 12 | manual | 1d | 2019-06-04 | 2019-06-04 |  |  |  | start no earlier than 2019-06-04 | BMU - Menadzer1; BMU - Menadzer2 | 16h | 560 |
| 201 | 23.1.13 | Rukovođenje projektom 13 | manual | 1d | 2019-07-02 | 2019-07-02 |  |  |  | start no earlier than 2019-07-02 | BMU - Menadzer1; BMU - Menadzer2 | 16h | 560 |
| 202 | 23.1.14 | Rukovođenje projektom 14 | manual | 1d | 2019-08-02 | 2019-08-02 |  |  |  | start no earlier than 2019-08-02 | BMU - Menadzer1; BMU - Menadzer2 | 16h | 560 |
| 203 | 23.1.15 | Rukovođenje projektom 15 | manual | 1d | 2019-09-03 | 2019-09-03 |  |  |  | start no earlier than 2019-09-03 | BMU - Menadzer1; BMU - Menadzer2 | 16h | 560 |
| 204 | 23.1.16 | Rukovođenje projektom 16 | manual | 1d | 2019-10-02 | 2019-10-02 |  |  |  | start no earlier than 2019-10-02 | BMU - Menadzer1; BMU - Menadzer2 | 16h | 560 |
| 205 | 23.1.17 | Rukovođenje projektom 17 | manual | 1d | 2019-11-05 | 2019-11-05 |  |  |  | start no earlier than 2019-11-05 | BMU - Menadzer1; BMU - Menadzer2 | 16h | 560 |
| 206 | 23.1.18 | Rukovođenje projektom 18 | manual | 1d | 2019-12-03 | 2019-12-03 |  |  |  | start no earlier than 2019-12-03 | BMU - Menadzer1; BMU - Menadzer2 | 16h | 560 |
| 207 | 23.1.19 | Rukovođenje projektom 19 | manual | 1d | 2020-01-02 | 2020-01-02 |  |  |  | start no earlier than 2020-01-02 | BMU - Menadzer1; BMU - Menadzer2 | 16h | 560 |
| 208 | 23.1.20 | Rukovođenje projektom 20 | manual | 1d | 2020-02-04 | 2020-02-04 |  |  |  | start no earlier than 2020-02-04 | BMU - Menadzer1; BMU - Menadzer2 | 16h | 560 |
| 209 | 23.1.21 | Rukovođenje projektom 21 | manual | 1d | 2020-03-03 | 2020-03-03 |  |  |  | start no earlier than 2020-03-03 | BMU - Menadzer1; BMU - Menadzer2 | 16h | 560 |
| 210 | 23.1.22 | Rukovođenje projektom 22 | manual | 1d | 2020-04-02 | 2020-04-02 |  |  |  | start no earlier than 2020-04-02 | BMU - Menadzer1; BMU - Menadzer2 | 16h | 560 |
| 211 | 23.1.23 | Rukovođenje projektom 23 | manual | 1d | 2020-05-05 | 2020-05-05 |  |  |  | start no earlier than 2020-05-05 | BMU - Menadzer1; BMU - Menadzer2 | 16h | 560 |
| 212 | 23.1.24 | Rukovođenje projektom 24 | manual | 1d | 2020-06-02 | 2020-06-02 |  |  |  | start no earlier than 2020-06-02 | BMU - Menadzer1; BMU - Menadzer2 | 16h | 560 |
| 213 | 23.1.25 | Rukovođenje projektom 25 | manual | 1d | 2020-07-02 | 2020-07-02 |  |  |  | start no earlier than 2020-07-02 | BMU - Menadzer1; BMU - Menadzer2 | 16h | 560 |
| 214 | 23.1.26 | Rukovođenje projektom 26 | manual | 1d | 2020-08-04 | 2020-08-04 |  |  |  | start no earlier than 2020-08-04 | BMU - Menadzer1; BMU - Menadzer2 | 16h | 560 |
| 215 | 23.1.27 | Rukovođenje projektom 27 | manual | 1d | 2020-09-02 | 2020-09-02 |  |  |  | start no earlier than 2020-09-02 | BMU - Menadzer1; BMU - Menadzer2 | 16h | 560 |
| 216 | 23.1.28 | Rukovođenje projektom 28 | manual | 1d | 2020-10-02 | 2020-10-02 |  |  |  | start no earlier than 2020-10-02 | BMU - Menadzer3 | 8h | 280 |
| 217 | 23.1.29 | Rukovođenje projektom 29 | manual | 1d | 2020-11-03 | 2020-11-03 |  |  |  | start no earlier than 2020-11-03 | BMU - Menadzer3 | 8h | 280 |
| 218 | 23.1.30 | Rukovođenje projektom 30 | manual | 1d | 2020-12-02 | 2020-12-02 |  |  |  | start no earlier than 2020-12-02 | BMU - Menadzer3 | 8h | 280 |
| 219 | 23.1.31 | Rukovođenje projektom 31 | manual | 1d | 2021-01-05 | 2021-01-05 |  |  |  | start no earlier than 2021-01-05 | BMU - Menadzer3 | 8h | 280 |
| 220 | 23.1.32 | Rukovođenje projektom 32 | manual | 1d | 2021-02-02 | 2021-02-02 |  |  |  | start no earlier than 2021-02-02 | BMU - Menadzer3 | 8h | 280 |
| 221 | 23.1.33 | Rukovođenje projektom 33 | manual | 1d | 2021-03-02 | 2021-03-02 |  |  |  | start no earlier than 2021-03-02 | BMU - Menadzer1; BMU - Menadzer2 | 16h | 560 |
| 222 | 23.1.34 | Rukovođenje projektom 34 | manual | 1d | 2021-04-02 | 2021-04-02 |  |  |  | start no earlier than 2021-04-02 | BMU - Menadzer1; BMU - Menadzer2 | 16h | 560 |
| 223 | 23.1.35 | Rukovođenje projektom 35 | manual | 1d | 2021-05-04 | 2021-05-04 |  |  |  | start no earlier than 2021-05-04 | BMU - Menadzer1; BMU - Menadzer2 | 16h | 560 |
| 224 | 23.1.36 | Rukovođenje projektom 36 | manual | 1d | 2021-06-02 | 2021-06-02 |  |  |  | start no earlier than 2021-06-02 | BMU - Menadzer1; BMU - Menadzer2 | 16h | 560 |
| 225 | 23.2 | Minimalizacija budžeta |  | 34d | 2018-07-02 | 2018-08-16 |  | 661d | 0d |  | BMU - Istraživač3 [50%]; BMU - Tehničar1 [50%] | 272h | 6,392 |

| ID | WBS | Task | Type | Duration | Start | Finish | Predecessors | Total slack | Free slack | Constraint | Resources | Work | Cost |
| --- | --- | --- | --- | --- | --- | --- | --- | --- | --- | --- | --- | --- | --- |
| 226 | 23.3 | **Minimalizacija rizika** |  | 759d | 2018-07-03 | 2021-06-03 |  | 0d |  |  |  | 288h | 5,832 |
| 227 | 23.3.1 | Minimalizacija rizika 1 | manual | 1d | 2018-07-03 | 2018-07-03 |  |  |  | start no earlier than 2018-07-03 | BMU - Tehničar2 [50%]; BMU - Tehničar3 [50%] | 8h | 162 |
| 228 | 23.3.2 | Minimalizacija rizika 2 | manual | 1d | 2018-08-03 | 2018-08-03 |  |  |  | start no earlier than 2018-08-03 | BMU - Tehničar2 [50%]; BMU - Tehničar3 [50%] | 8h | 162 |
| 229 | 23.3.3 | Minimalizacija rizika 3 | manual | 1d | 2018-09-03 | 2018-09-03 |  |  |  | start no earlier than 2018-09-03 | BMU - Tehničar2 [50%]; BMU - Tehničar3 [50%] | 8h | 162 |
| 230 | 23.3.4 | Minimalizacija rizika 4 | manual | 1d | 2018-10-03 | 2018-10-03 |  |  |  | start no earlier than 2018-10-03 | BMU - Tehničar2 [50%]; BMU - Tehničar3 [50%] | 8h | 162 |
| 231 | 23.3.5 | Minimalizacija rizika 5 | manual | 1d | 2018-11-05 | 2018-11-05 |  |  |  | start no earlier than 2018-11-05 | BMU - Tehničar2 [50%]; BMU - Tehničar3 [50%] | 8h | 162 |
| 232 | 23.3.6 | Minimalizacija rizika 6 | manual | 1d | 2018-12-03 | 2018-12-03 |  |  |  | start no earlier than 2018-12-03 | BMU - Tehničar2 [50%]; BMU - Tehničar3 [50%] | 8h | 162 |
| 233 | 23.3.7 | Minimalizacija rizika 7 | manual | 1d | 2019-01-03 | 2019-01-03 |  |  |  | start no earlier than 2019-01-03 | BMU - Tehničar2 [50%]; BMU - Tehničar3 [50%] | 8h | 162 |
| 234 | 23.3.8 | Minimalizacija rizika 8 | manual | 1d | 2019-02-04 | 2019-02-04 |  |  |  | start no earlier than 2019-02-04 | BMU - Tehničar2 [50%]; BMU - Tehničar3 [50%] | 8h | 162 |
| 235 | 23.3.9 | Minimalizacija rizika 9 | manual | 1d | 2019-03-04 | 2019-03-04 |  |  |  | start no earlier than 2019-03-04 | BMU - Tehničar2 [50%]; BMU - Tehničar3 [50%] | 8h | 162 |
| 236 | 23.3.10 | Minimalizacija rizika 10 | manual | 1d | 2019-04-03 | 2019-04-03 |  |  |  | start no earlier than 2019-04-03 | BMU - Tehničar2 [50%]; BMU - Tehničar3 [50%] | 8h | 162 |
| 237 | 23.3.11 | Minimalizacija rizika 11 | manual | 1d | 2019-05-03 | 2019-05-03 |  |  |  | start no earlier than 2019-05-03 | BMU - Tehničar2 [50%]; BMU - Tehničar3 [50%] | 8h | 162 |
| 238 | 23.3.12 | Minimalizacija rizika 12 | manual | 1d | 2019-06-03 | 2019-06-03 |  |  |  | start no earlier than 2019-06-03 | BMU - Tehničar2 [50%]; BMU - Tehničar3 [50%] | 8h | 162 |
| 239 | 23.3.13 | Minimalizacija rizika 13 | manual | 1d | 2019-07-03 | 2019-07-03 |  |  |  | start no earlier than 2019-07-03 | BMU - Tehničar2 [50%]; BMU - Tehničar3 [50%] | 8h | 162 |
| 240 | 23.3.14 | Minimalizacija rizika 14 | manual | 1d | 2019-08-05 | 2019-08-05 |  |  |  | start no earlier than 2019-08-05 | BMU - Tehničar2 [50%]; BMU - Tehničar3 [50%] | 8h | 162 |
| 241 | 23.3.15 | Minimalizacija rizika 15 | manual | 1d | 2019-09-03 | 2019-09-03 |  |  |  | start no earlier than 2019-09-03 | BMU - Tehničar2 [50%]; BMU - Tehničar3 [50%] | 8h | 162 |
| 242 | 23.3.16 | Minimalizacija rizika 16 | manual | 1d | 2019-10-03 | 2019-10-03 |  |  |  | start no earlier than 2019-10-03 | BMU - Tehničar2 [50%]; BMU - Tehničar3 [50%] | 8h | 162 |
| 243 | 23.3.17 | Minimalizacija rizika 17 | manual | 1d | 2019-11-04 | 2019-11-04 |  |  |  | start no earlier than 2019-11-04 | BMU - Tehničar2 [50%]; BMU - Tehničar3 [50%] | 8h | 162 |
| 244 | 23.3.18 | Minimalizacija rizika 18 | manual | 1d | 2019-12-03 | 2019-12-03 |  |  |  | start no earlier than 2019-12-03 | BMU - Tehničar2 [50%]; BMU - Tehničar3 [50%] | 8h | 162 |
| 245 | 23.3.19 | Minimalizacija rizika 19 | manual | 1d | 2020-01-03 | 2020-01-03 |  |  |  | start no earlier than 2020-01-03 | BMU - Tehničar2 [50%]; BMU - Tehničar3 [50%] | 8h | 162 |
| 246 | 23.3.20 | Minimalizacija rizika 20 | manual | 1d | 2020-02-03 | 2020-02-03 |  |  |  | start no earlier than 2020-02-03 | BMU - Tehničar2 [50%]; BMU - Tehničar3 [50%] | 8h | 162 |
| 247 | 23.3.21 | Minimalizacija rizika 21 | manual | 1d | 2020-03-03 | 2020-03-03 |  |  |  | start no earlier than 2020-03-03 | BMU - Tehničar2 [50%]; BMU - Tehničar3 [50%] | 8h | 162 |
| 248 | 23.3.22 | Minimalizacija rizika 22 | manual | 1d | 2020-04-03 | 2020-04-03 |  |  |  | start no earlier than 2020-04-03 | BMU - Tehničar2 [50%]; BMU - Tehničar3 [50%] | 8h | 162 |
| 249 | 23.3.23 | Minimalizacija rizika 23 | manual | 1d | 2020-05-04 | 2020-05-04 |  |  |  | start no earlier than 2020-05-04 | BMU - Tehničar2 [50%]; BMU - Tehničar3 [50%] | 8h | 162 |
| 250 | 23.3.24 | Minimalizacija rizika 24 | manual | 1d | 2020-06-03 | 2020-06-03 |  |  |  | start no earlier than 2020-06-03 | BMU - Tehničar2 [50%]; BMU - Tehničar3 [50%] | 8h | 162 |
| 251 | 23.3.25 | Minimalizacija rizika 25 | manual | 1d | 2020-07-03 | 2020-07-03 |  |  |  | start no earlier than 2020-07-03 | BMU - Tehničar2 [50%]; BMU - Tehničar3 [50%] | 8h | 162 |
| 252 | 23.3.26 | Minimalizacija rizika 26 | manual | 1d | 2020-08-03 | 2020-08-03 |  |  |  | start no earlier than 2020-08-03 | BMU - Tehničar2 [50%]; BMU - Tehničar3 [50%] | 8h | 162 |
| 253 | 23.3.27 | Minimalizacija rizika 27 | manual | 1d | 2020-09-03 | 2020-09-03 |  |  |  | start no earlier than 2020-09-03 | BMU - Tehničar2 [50%]; BMU - Tehničar3 [50%] | 8h | 162 |
| 254 | 23.3.28 | Minimalizacija rizika 28 | manual | 1d | 2020-10-05 | 2020-10-05 |  |  |  | start no earlier than 2020-10-05 | BMU - Tehničar2 [50%]; BMU - Tehničar3 [50%] | 8h | 162 |
| 255 | 23.3.29 | Minimalizacija rizika 29 | manual | 1d | 2020-11-03 | 2020-11-03 |  |  |  | start no earlier than 2020-11-03 | BMU - Tehničar2 [50%]; BMU - Tehničar3 [50%] | 8h | 162 |
| 256 | 23.3.30 | Minimalizacija rizika 30 | manual | 1d | 2020-12-03 | 2020-12-03 |  |  |  | start no earlier than 2020-12-03 | BMU - Tehničar2 [50%]; BMU - Tehničar3 [50%] | 8h | 162 |
| 257 | 23.3.31 | Minimalizacija rizika 31 | manual | 1d | 2021-01-04 | 2021-01-04 |  |  |  | start no earlier than 2021-01-04 | BMU - Tehničar2 [50%]; BMU - Tehničar3 [50%] | 8h | 162 |
| 258 | 23.3.32 | Minimalizacija rizika 32 | manual | 1d | 2021-02-03 | 2021-02-03 |  |  |  | start no earlier than 2021-02-03 | BMU - Tehničar2 [50%]; BMU - Tehničar3 [50%] | 8h | 162 |
| 259 | 23.3.33 | Minimalizacija rizika 33 | manual | 1d | 2021-03-04 | 2021-03-04 |  |  |  | start no earlier than 2021-03-04 | BMU - Tehničar3 [50%]; BMU - Tehničar1 [50%] | 8h | 162 |
| 260 | 23.3.34 | Minimalizacija rizika 34 | manual | 1d | 2021-04-05 | 2021-04-05 |  |  |  | start no earlier than 2021-04-05 | BMU - Tehničar3 [50%]; BMU - Tehničar1 [50%] | 8h | 162 |
| 261 | 23.3.35 | Minimalizacija rizika 35 | manual | 1d | 2021-05-03 | 2021-05-03 |  |  |  | start no earlier than 2021-05-03 | BMU - Tehničar3 [50%]; BMU - Tehničar1 [50%] | 8h | 162 |
| 262 | 23.3.36 | Minimalizacija rizika 36 | manual | 1d | 2021-06-03 | 2021-06-03 |  |  |  | start no earlier than 2021-06-03 | BMU - Tehničar3 [50%]; BMU - Tehničar1 [50%] | 8h | 162 |
| 263 | 23.4 | Minimalizacija iskorišćenja resursa |  | 34d | 2018-08-17 | 2018-10-03 | 225 | 661d | 0d |  | BMU - Istraživač3 [50%]; BMU - Tehničar1 [50%] | 272h | 6,392 |

| ID | WBS | Task | Type | Duration | Start | Finish | Total slack | Constraint | Resources | Work | Cost |
| --- | --- | --- | --- | --- | --- | --- | --- | --- | --- | --- | --- |
| 264 | 23.5 | **Upravljanje aktivnostima** |  | 757.75d | 2018-07-02 | 2021-06-01 | 0d |  |  | 288h | 7,704 |
| 265 | 23.5.1 | Upravljanje aktivnostima 1 | manual | 1d | 2018-07-02 | 2018-07-02 |  | start no earlier than 2018-07-02 | BMU - Istraživač1 [50%]; BMU - Istraživač2 [50%] | 8h | 214 |
| 266 | 23.5.2 | Upravljanje aktivnostima 2 | manual | 1d | 2018-08-01 | 2018-08-01 |  | start no earlier than 2018-08-01 | BMU - Istraživač1 [50%]; BMU - Istraživač2 [50%] | 8h | 214 |
| 267 | 23.5.3 | Upravljanje aktivnostima 3 | manual | 1d | 2018-09-03 | 2018-09-03 |  | start no earlier than 2018-09-03 | BMU - Istraživač1 [50%]; BMU - Istraživač2 [50%] | 8h | 214 |
| 268 | 23.5.4 | Upravljanje aktivnostima 4 | manual | 1d | 2018-10-01 | 2018-10-01 |  | start no earlier than 2018-10-01 | BMU - Istraživač1 [50%]; BMU - Istraživač2 [50%] | 8h | 214 |
| 269 | 23.5.5 | Upravljanje aktivnostima 5 | manual | 1d | 2018-11-01 | 2018-11-01 |  | start no earlier than 2018-11-01 | BMU - Istraživač1 [50%]; BMU - Istraživač2 [50%] | 8h | 214 |
| 270 | 23.5.6 | Upravljanje aktivnostima 6 | manual | 1d | 2018-12-03 | 2018-12-03 |  | start no earlier than 2018-12-03 | BMU - Istraživač1 [50%]; BMU - Istraživač2 [50%] | 8h | 214 |
| 271 | 23.5.7 | Upravljanje aktivnostima 7 | manual | 1d | 2019-01-01 | 2019-01-01 |  | start no earlier than 2019-01-01 | BMU - Istraživač1 [50%]; BMU - Istraživač2 [50%] | 8h | 214 |
| 272 | 23.5.8 | Upravljanje aktivnostima 8 | manual | 1d | 2019-02-01 | 2019-02-01 |  | start no earlier than 2019-02-01 | BMU - Istraživač1 [50%]; BMU - Istraživač2 [50%] | 8h | 214 |
| 273 | 23.5.9 | Upravljanje aktivnostima 9 | manual | 1d | 2019-03-01 | 2019-03-01 |  | start no earlier than 2019-03-01 | BMU - Istraživač1 [50%]; BMU - Istraživač2 [50%] | 8h | 214 |
| 274 | 23.5.10 | Upravljanje aktivnostima 10 | manual | 1d | 2019-04-01 | 2019-04-01 |  | start no earlier than 2019-04-01 | BMU - Istraživač1 [50%]; BMU - Istraživač2 [50%] | 8h | 214 |
| 275 | 23.5.11 | Upravljanje aktivnostima 11 | manual | 1d | 2019-05-01 | 2019-05-01 |  | start no earlier than 2019-05-01 | BMU - Istraživač1 [50%]; BMU - Istraživač2 [50%] | 8h | 214 |
| 276 | 23.5.12 | Upravljanje aktivnostima 12 | manual | 1d | 2019-06-03 | 2019-06-03 |  | start no earlier than 2019-06-03 | BMU - Istraživač1 [50%]; BMU - Istraživač2 [50%] | 8h | 214 |
| 277 | 23.5.13 | Upravljanje aktivnostima 13 | manual | 1d | 2019-07-01 | 2019-07-01 |  | start no earlier than 2019-07-01 | BMU - Istraživač1 [50%]; BMU - Istraživač2 [50%] | 8h | 214 |
| 278 | 23.5.14 | Upravljanje aktivnostima 14 | manual | 1d | 2019-08-01 | 2019-08-01 |  | start no earlier than 2019-08-01 | BMU - Istraživač1 [50%]; BMU - Istraživač2 [50%] | 8h | 214 |
| 279 | 23.5.15 | Upravljanje aktivnostima 15 | manual | 1d | 2019-09-02 | 2019-09-02 |  | start no earlier than 2019-09-02 | BMU - Istraživač1 [50%]; BMU - Istraživač2 [50%] | 8h | 214 |
| 280 | 23.5.16 | Upravljanje aktivnostima 16 | manual | 1d | 2019-10-01 | 2019-10-01 |  | start no earlier than 2019-10-01 | BMU - Istraživač1 [50%]; BMU - Istraživač2 [50%] | 8h | 214 |
| 281 | 23.5.17 | Upravljanje aktivnostima 17 | manual | 1d | 2019-11-01 | 2019-11-01 |  | start no earlier than 2019-11-01 | BMU - Istraživač1 [50%]; BMU - Istraživač2 [50%] | 8h | 214 |
| 282 | 23.5.18 | Upravljanje aktivnostima 18 | manual | 1d | 2019-12-02 | 2019-12-02 |  | start no earlier than 2019-12-02 | BMU - Istraživač1 [50%]; BMU - Istraživač2 [50%] | 8h | 214 |
| 283 | 23.5.19 | Upravljanje aktivnostima 19 | manual | 1d | 2020-01-01 | 2020-01-01 |  | start no earlier than 2020-01-01 | BMU - Istraživač1 [50%]; BMU - Istraživač2 [50%] | 8h | 214 |
| 284 | 23.5.20 | Upravljanje aktivnostima 20 | manual | 1d | 2020-02-03 | 2020-02-03 |  | start no earlier than 2020-02-03 | BMU - Istraživač1 [50%]; BMU - Istraživač2 [50%] | 8h | 214 |
| 285 | 23.5.21 | Upravljanje aktivnostima 21 | manual | 1d | 2020-03-02 | 2020-03-02 |  | start no earlier than 2020-03-02 | BMU - Istraživač1 [50%]; BMU - Istraživač2 [50%] | 8h | 214 |
| 286 | 23.5.22 | Upravljanje aktivnostima 22 | manual | 1d | 2020-04-01 | 2020-04-01 |  | start no earlier than 2020-04-01 | BMU - Istraživač1 [50%]; BMU - Istraživač2 [50%] | 8h | 214 |
| 287 | 23.5.23 | Upravljanje aktivnostima 23 | manual | 1d | 2020-05-01 | 2020-05-01 |  | start no earlier than 2020-05-01 | BMU - Istraživač1 [50%]; BMU - Istraživač2 [50%] | 8h | 214 |
| 288 | 23.5.24 | Upravljanje aktivnostima 24 | manual | 1d | 2020-06-01 | 2020-06-01 |  | start no earlier than 2020-06-01 | BMU - Istraživač1 [50%]; BMU - Istraživač2 [50%] | 8h | 214 |
| 289 | 23.5.25 | Upravljanje aktivnostima 25 | manual | 1d | 2020-07-01 | 2020-07-01 |  | start no earlier than 2020-07-01 | BMU - Istraživač1 [50%]; BMU - Istraživač2 [50%] | 8h | 214 |
| 290 | 23.5.26 | Upravljanje aktivnostima 26 | manual | 1d | 2020-08-03 | 2020-08-03 |  | start no earlier than 2020-08-03 | BMU - Istraživač1 [50%]; BMU - Istraživač2 [50%] | 8h | 214 |
| 291 | 23.5.27 | Upravljanje aktivnostima 27 | manual | 1d | 2020-09-01 | 2020-09-01 |  | start no earlier than 2020-09-01 | BMU - Istraživač1 [50%]; BMU - Istraživač2 [50%] | 8h | 214 |
| 292 | 23.5.28 | Upravljanje aktivnostima 28 | manual | 1d | 2020-10-01 | 2020-10-01 |  | start no earlier than 2020-10-01 | BMU - Istraživač1 [50%]; BMU - Istraživač2 [50%] | 8h | 214 |
| 293 | 23.5.29 | Upravljanje aktivnostima 29 | manual | 1d | 2020-11-02 | 2020-11-02 |  | start no earlier than 2020-11-02 | BMU - Istraživač1 [50%]; BMU - Istraživač2 [50%] | 8h | 214 |
| 294 | 23.5.30 | Upravljanje aktivnostima 30 | manual | 1d | 2020-12-01 | 2020-12-01 |  | start no earlier than 2020-12-01 | BMU - Istraživač1 [50%]; BMU - Istraživač2 [50%] | 8h | 214 |
| 295 | 23.5.31 | Upravljanje aktivnostima 31 | manual | 1d | 2021-01-01 | 2021-01-01 |  | start no earlier than 2021-01-01 | BMU - Istraživač1 [50%]; BMU - Istraživač2 [50%] | 8h | 214 |
| 296 | 23.5.32 | Upravljanje aktivnostima 32 | manual | 1d | 2021-02-01 | 2021-02-01 |  | start no earlier than 2021-02-01 | BMU - Istraživač1 [50%]; BMU - Istraživač2 [50%] | 8h | 214 |
| 297 | 23.5.33 | Upravljanje aktivnostima 33 | manual | 1d | 2021-03-01 | 2021-03-01 |  | start no earlier than 2021-03-01 | BMU - Istraživač1 [50%]; BMU - Istraživač2 [50%] | 8h | 214 |
| 298 | 23.5.34 | Upravljanje aktivnostima 34 | manual | 1d | 2021-04-01 | 2021-04-01 |  | start no earlier than 2021-04-01 | BMU - Istraživač1 [50%]; BMU - Istraživač2 [50%] | 8h | 214 |
| 299 | 23.5.35 | Upravljanje aktivnostima 35 | manual | 1d | 2021-05-03 | 2021-05-03 |  | start no earlier than 2021-05-03 | BMU - Istraživač1 [50%]; BMU - Istraživač2 [50%] | 8h | 214 |
| 300 | 23.5.36 | Upravljanje aktivnostima 36 | manual | 1d | 2021-06-01 | 2021-06-01 |  | start no earlier than 2021-06-01 | BMU - Istraživač1 [50%]; BMU - Istraživač2 [50%] | 8h | 214 |

| ID | WBS | Task | Type | Duration | Start | Finish | Predecessors | Total slack | Free slack | Constraint | Resources | Work | Cost |
| --- | --- | --- | --- | --- | --- | --- | --- | --- | --- | --- | --- | --- | --- |
| 301 | 23.6 | **Mesečni sastanak - video konferencija** |  | 757.75d | 2018-07-02 | 2021-06-01 |  | 0d |  |  |  | 536h | 18,760 |
| 302 | 23.6.1 | Mesečni sastanak - video konferencija 1 | manual | 1d | 2018-07-02 | 2018-07-02 |  |  |  | start no earlier than 2018-07-02 | BMU - Menadzer1; BMU - Menadzer2 | 16h | 560 |
| 303 | 23.6.2 | Mesečni sastanak - video konferencija 2 | manual | 1d | 2018-08-01 | 2018-08-01 |  |  |  | start no earlier than 2018-08-01 | BMU - Menadzer1; BMU - Menadzer2 | 16h | 560 |
| 304 | 23.6.3 | Mesečni sastanak - video konferencija 3 | manual | 1d | 2018-09-03 | 2018-09-03 |  |  |  | start no earlier than 2018-09-03 | BMU - Menadzer1; BMU - Menadzer2 | 16h | 560 |
| 305 | 23.6.4 | Mesečni sastanak - video konferencija 4 | manual | 1d | 2018-10-01 | 2018-10-01 |  |  |  | start no earlier than 2018-10-01 | BMU - Menadzer1; BMU - Menadzer2 | 16h | 560 |
| 306 | 23.6.5 | Mesečni sastanak - video konferencija 5 | manual | 1d | 2018-11-01 | 2018-11-01 |  |  |  | start no earlier than 2018-11-01 | BMU - Menadzer1; BMU - Menadzer2 | 16h | 560 |
| 307 | 23.6.6 | Mesečni sastanak - video konferencija 6 | manual | 1d | 2018-12-03 | 2018-12-03 |  |  |  | start no earlier than 2018-12-03 | BMU - Menadzer1; BMU - Menadzer2 | 16h | 560 |
| 308 | 23.6.7 | Mesečni sastanak - video konferencija 7 | manual | 1d | 2019-01-01 | 2019-01-01 |  |  |  | start no earlier than 2019-01-01 | BMU - Menadzer1; BMU - Menadzer2 | 16h | 560 |
| 309 | 23.6.8 | Mesečni sastanak - video konferencija 8 | manual | 1d | 2019-02-01 | 2019-02-01 |  |  |  | start no earlier than 2019-02-01 | BMU - Menadzer1; BMU - Menadzer2 | 16h | 560 |
| 310 | 23.6.9 | Mesečni sastanak - video konferencija 9 | manual | 1d | 2019-03-01 | 2019-03-01 |  |  |  | start no earlier than 2019-03-01 | BMU - Menadzer1; BMU - Menadzer2 | 16h | 560 |
| 311 | 23.6.10 | Mesečni sastanak - video konferencija 10 | manual | 1d | 2019-04-01 | 2019-04-01 |  |  |  | start no earlier than 2019-04-01 | BMU - Menadzer1; BMU - Menadzer2 | 16h | 560 |
| 312 | 23.6.11 | Mesečni sastanak - video konferencija 11 | manual | 1d | 2019-05-01 | 2019-05-01 |  |  |  | start no earlier than 2019-05-01 | BMU - Menadzer1; BMU - Menadzer2 | 16h | 560 |
| 313 | 23.6.12 | Mesečni sastanak - video konferencija 12 | manual | 1d | 2019-06-03 | 2019-06-03 |  |  |  | start no earlier than 2019-06-03 | BMU - Menadzer1; BMU - Menadzer2 | 16h | 560 |
| 314 | 23.6.13 | Mesečni sastanak - video konferencija 13 | manual | 1d | 2019-07-01 | 2019-07-01 |  |  |  | start no earlier than 2019-07-01 | BMU - Menadzer1; BMU - Menadzer2 | 16h | 560 |
| 315 | 23.6.14 | Mesečni sastanak - video konferencija 14 | manual | 1d | 2019-08-01 | 2019-08-01 |  |  |  | start no earlier than 2019-08-01 | BMU - Menadzer1; BMU - Menadzer2 | 16h | 560 |
| 316 | 23.6.15 | Mesečni sastanak - video konferencija 15 | manual | 1d | 2019-09-02 | 2019-09-02 |  |  |  | start no earlier than 2019-09-02 | BMU - Menadzer1; BMU - Menadzer2 | 16h | 560 |
| 317 | 23.6.16 | Mesečni sastanak - video konferencija 16 | manual | 1d | 2019-10-01 | 2019-10-01 |  |  |  | start no earlier than 2019-10-01 | BMU - Menadzer1; BMU - Menadzer2 | 16h | 560 |
| 318 | 23.6.17 | Mesečni sastanak - video konferencija 17 | manual | 1d | 2019-11-01 | 2019-11-01 |  |  |  | start no earlier than 2019-11-01 | BMU - Menadzer1; BMU - Menadzer2 | 16h | 560 |
| 319 | 23.6.18 | Mesečni sastanak - video konferencija 18 | manual | 1d | 2019-12-02 | 2019-12-02 |  |  |  | start no earlier than 2019-12-02 | BMU - Menadzer1; BMU - Menadzer2 | 16h | 560 |
| 320 | 23.6.19 | Mesečni sastanak - video konferencija 19 | manual | 1d | 2020-01-01 | 2020-01-01 |  |  |  | start no earlier than 2020-01-01 | BMU - Menadzer1; BMU - Menadzer2 | 16h | 560 |
| 321 | 23.6.20 | Mesečni sastanak - video konferencija 20 | manual | 1d | 2020-02-03 | 2020-02-03 |  |  |  | start no earlier than 2020-02-03 | BMU - Menadzer1; BMU - Menadzer2 | 16h | 560 |
| 322 | 23.6.21 | Mesečni sastanak - video konferencija 21 | manual | 1d | 2020-03-02 | 2020-03-02 |  |  |  | start no earlier than 2020-03-02 | BMU - Menadzer1; BMU - Menadzer2 | 16h | 560 |
| 323 | 23.6.22 | Mesečni sastanak - video konferencija 22 | manual | 1d | 2020-04-01 | 2020-04-01 |  |  |  | start no earlier than 2020-04-01 | BMU - Menadzer1; BMU - Menadzer2 | 16h | 560 |
| 324 | 23.6.23 | Mesečni sastanak - video konferencija 23 | manual | 1d | 2020-05-01 | 2020-05-01 |  |  |  | start no earlier than 2020-05-01 | BMU - Menadzer1; BMU - Menadzer2 | 16h | 560 |
| 325 | 23.6.24 | Mesečni sastanak - video konferencija 24 | manual | 1d | 2020-06-01 | 2020-06-01 |  |  |  | start no earlier than 2020-06-01 | BMU - Menadzer1; BMU - Menadzer2 | 16h | 560 |
| 326 | 23.6.25 | Mesečni sastanak - video konferencija 25 | manual | 1d | 2020-07-01 | 2020-07-01 |  |  |  | start no earlier than 2020-07-01 | BMU - Menadzer1; BMU - Menadzer2 | 16h | 560 |
| 327 | 23.6.26 | Mesečni sastanak - video konferencija 26 | manual | 1d | 2020-08-03 | 2020-08-03 |  |  |  | start no earlier than 2020-08-03 | BMU - Menadzer1; BMU - Menadzer2 | 16h | 560 |
| 328 | 23.6.27 | Mesečni sastanak - video konferencija 27 | manual | 1d | 2020-09-01 | 2020-09-01 |  |  |  | start no earlier than 2020-09-01 | BMU - Menadzer1; BMU - Menadzer2 | 16h | 560 |
| 329 | 23.6.28 | Mesečni sastanak - video konferencija 28 | manual | 1d | 2020-10-01 | 2020-10-01 |  |  |  | start no earlier than 2020-10-01 | BMU - Menadzer3 | 8h | 280 |
| 330 | 23.6.29 | Mesečni sastanak - video konferencija 29 | manual | 1d | 2020-11-02 | 2020-11-02 |  |  |  | start no earlier than 2020-11-02 | BMU - Menadzer3 | 8h | 280 |
| 331 | 23.6.30 | Mesečni sastanak - video konferencija 30 | manual | 1d | 2020-12-01 | 2020-12-01 |  |  |  | start no earlier than 2020-12-01 | BMU - Menadzer3 | 8h | 280 |
| 332 | 23.6.31 | Mesečni sastanak - video konferencija 31 | manual | 1d | 2021-01-01 | 2021-01-01 |  |  |  | start no earlier than 2021-01-01 | BMU - Menadzer3 | 8h | 280 |
| 333 | 23.6.32 | Mesečni sastanak - video konferencija 32 | manual | 1d | 2021-02-01 | 2021-02-01 |  |  |  | start no earlier than 2021-02-01 | BMU - Menadzer3 | 8h | 280 |
| 334 | 23.6.33 | Mesečni sastanak - video konferencija 33 | manual | 1d | 2021-03-01 | 2021-03-01 |  |  |  | start no earlier than 2021-03-01 | BMU - Menadzer1; BMU - Menadzer2 | 16h | 560 |
| 335 | 23.6.34 | Mesečni sastanak - video konferencija 34 | manual | 1d | 2021-04-01 | 2021-04-01 |  |  |  | start no earlier than 2021-04-01 | BMU - Menadzer1; BMU - Menadzer2 | 16h | 560 |
| 336 | 23.6.35 | Mesečni sastanak - video konferencija 35 | manual | 1d | 2021-05-03 | 2021-05-03 |  |  |  | start no earlier than 2021-05-03 | BMU - Menadzer1; BMU - Menadzer2 | 16h | 560 |
| 337 | 23.6.36 | Mesečni sastanak - video konferencija 36 | manual | 1d | 2021-06-01 | 2021-06-01 |  |  |  | start no earlier than 2021-06-01 | BMU - Menadzer1; BMU - Menadzer2 | 16h | 560 |
| 338 | 23.7 | Dorada MS Project fajla |  | 10d | 2018-07-02 | 2018-07-13 |  | 764d | 0d |  | BMU - Istraživač3 [20%]; BMU - Tehničar2 [30%]; BMU - Administrator2 [50%] | 80h | 1,569.2 |
| 339 | 23.8 | Upravljanje merama kvailteta i postupcima |  | 50d | 2018-10-04 | 2018-12-12 | 263 | 661d |  |  | BMU - Administrator3 [10%]; BMU - Istraživač3 [90%] | 400h | 10,285.2 |
| 340 | 23.9 | Upravljanje načinom komunikacije |  | 5d | 2018-07-16 | 2018-07-20 | 338 | 764d |  |  | BMU - Administrator2 [60%]; BMU - Istraživač1 [40%] | 40h | 821.12 |
